# Sistema Integrado de Gestão de Frotas (SGFrotas)

| id | name | type | startDate | duration | endDate | progress | status | health | notes | epicId | phaseId | sprintId | dependencies | assignee | updates | isMilestone |
| --- | --- | --- | --- | --- | --- | --- | --- | --- | --- | --- | --- | --- | --- | --- | --- | --- |
| epic_gestor | Épico 1: Gestor de Frotas (Torre de Controle) | epic | 2026-09-21 | 50 | 2026-11-27 | 35 | in_progress | on_track | Visão centralizada para governança, controle de ativos, conformidade, contratos de leasing e conciliação financeira. |  |  |  |  |  |  |  |
| story_gestor_controle | Controle de Veículos & Máquina de Estados (Sprint 1) | story | 2026-10-05 | 10 | 2026-10-16 | 0 | not_started |  | Pilar validado em 23/09 (001.jpeg): Cadastro mestre, máquina de estados finita (Disponível, Em Uso, Oficina, Sinistrado) e localização por ATP. | epic_gestor | epic_gestor | sprint_1 | dep_g_ctrl sprint_0 FS | Squad Backend & Web |  |  |
| sub_gc_1 | · Modelagem relacional PostgreSQL para tabela veiculos |  |  |  |  |  | todo |  |  |  |  |  |  |  |  |  |
| sub_gc_2 | · Endpoint FastAPI /veiculos com filtros por status e ATP |  |  |  |  |  | todo |  |  |  |  |  |  |  |  |  |
| sub_gc_3 | · Interface React com Grid interativo e badges de estado |  |  |  |  |  | todo |  |  |  |  |  |  |  |  |  |
| story_gestor_prazos | Prazo de Veículos & Contratos Arval (Sprint 2) | story | 2026-10-19 | 10 | 2026-10-30 | 0 | not_started |  | Pilar validado em 23/09 (001.jpeg): Controle de vigência de leasing Arval, vencimentos de IPVA/licenciamento e cronograma de substituição. | epic_gestor | epic_gestor | sprint_2 | dep_g_prz story_gestor_controle FS | Squad Web Torre |  |  |
| sub_gp_1 | · Módulo de vigência de contratos de locação Arval |  |  |  |  |  | todo |  |  |  |  |  |  |  |  |  |
| sub_gp_2 | · Alertas automáticos de vencimento de IPVA, seguro e licenciamento |  |  |  |  |  | todo |  |  |  |  |  |  |  |  |  |
| sub_gp_3 | · Painel de planejamento de desmobilização e substituição da frota |  |  |  |  |  | todo |  |  |  |  |  |  |  |  |  |
| story_gestor_manutencao | Controle de Manutenção Preventiva & Corretiva (Sprint 3) | story | 2026-11-02 | 10 | 2026-11-13 | 0 | not_started |  | Pilar validado em 23/09 (001.jpeg): Acompanhamento preventivo a cada 10.000 km, revisões em garantia Arval e socorro. | epic_gestor | epic_gestor | sprint_3 | dep_g_man story_gestor_prazos FS | Squad Backend & Operações |  |  |
| sub_gm_1 | · Engine de cálculo de revisões periódicas por odômetro |  |  |  |  |  | todo |  |  |  |  |  |  |  |  |  |
| sub_gm_2 | · Bloqueio automático de alocação de veículos em manutenção |  |  |  |  |  | todo |  |  |  |  |  |  |  |  |  |
| sub_gm_3 | · Workflow de aprovação de orçamentos e autorização Arval |  |  |  |  |  | todo |  |  |  |  |  |  |  |  |  |
| story_gestor_combustivel | Consumo de Combustível & ValeCard REST (Sprint 4) | story | 2026-11-16 | 10 | 2026-11-27 | 0 | not_started |  | Pilar validado em 23/09 (001.jpeg): Conector REST ValeCard (Token oficial), cálculo de Km/L e motor de regras anti-fraude. | epic_gestor | epic_gestor | sprint_4 | dep_g_comb story_gestor_manutencao FS | Squad Integrações & Analytics |  |  |
| sub_gc_comb1 | · Integração FastAPI com webservice REST oficial da ValeCard |  |  |  |  |  | todo |  |  |  |  |  |  |  |  |  |
| sub_gc_comb2 | · Regras anti-fraude: alerta de volume excedente ao tanque e odômetro invertido |  |  |  |  |  | todo |  |  |  |  |  |  |  |  |  |
| sub_gc_comb3 | · Dashboard executivo de consumo médio (Km/L) e gastos por polo |  |  |  |  |  | todo |  |  |  |  |  |  |  |  |  |
| epic_tecnico | Épico 2: Técnico de Campo (Veículo em Cautela) | epic | 2026-10-05 | 60 | 2026-12-28 | 15 | in_progress | on_track | Interface PWA Mobile-First para técnicos de campo realizarem vistorias 360°, registrarem abastecimentos e consultarem custódias. |  |  |  |  |  |  |  |
| story_tecnico_cautela | Meu Veículo em Cautela & Alertas Push (Sprint 1) | story | 2026-10-05 | 10 | 2026-10-16 | 0 | not_started |  | História selecionada do Scrum_diagram.png (8 Story Points, Prioridade Alta). | epic_tecnico | epic_tecnico | sprint_1 | dep_t_caut sprint_0 FS | Squad Mobile & Backend |  |  |
| sub_tc_1 | · Task 1 (Backend FastAPI): API REST /cautela/status (2d) |  |  |  |  |  | todo |  |  |  |  |  |  |  |  |  |
| sub_tc_2 | · Task 2 (Mobile React): Tela Meu Veículo no App PWA (3d) |  |  |  |  |  | todo |  |  |  |  |  |  |  |  |  |
| sub_tc_3 | · Task 3 (Push): Engine de Cobrança e Alertas Firebase FCM (2d) |  |  |  |  |  | todo |  |  |  |  |  |  |  |  |  |
| sub_tc_4 | · Task 4 (QA): Testes E2E e Aceite de Cautela (1d) |  |  |  |  |  | todo |  |  |  |  |  |  |  |  |  |
| story_tecnico_checklist | Checklist Diário 360°, Fotos WebP & Offline (Sprint 5) | story | 2026-11-30 | 10 | 2026-12-11 | 0 | not_started |  | Checklist guiado em 4 passos com silhueta interativa de avarias, 5 fotos WebP e motor offline IndexedDB. | epic_tecnico | epic_tecnico | sprint_5 | dep_t_chk story_gestor_combustivel FS | Squad Mobile PWA |  |  |
| sub_tch_1 | · Interface touch com silhueta gráfica e toque nas avarias |  |  |  |  |  | todo |  |  |  |  |  |  |  |  |  |
| sub_tch_2 | · Captura de 5 fotos obrigatórias com compressão WebP (<200KB) |  |  |  |  |  | todo |  |  |  |  |  |  |  |  |  |
| sub_tch_3 | · Persistência IndexedDB e auto-sync em background ao reconectar |  |  |  |  |  | todo |  |  |  |  |  |  |  |  |  |
| story_tecnico_abastecimento | Abastecimento em Campo, Sinistros & Homologação (Sprint 6) | story | 2026-12-14 | 10 | 2026-12-28 | 0 | not_started |  | Registro de combustível com foto do cupom e hodômetro, botão de sinistro GPS e homologação integrada nas 17 ATPs. | epic_tecnico | epic_tecnico | sprint_6 | dep_t_abst story_tecnico_checklist FS | Squad Mobile & QA |  |  |
| sub_tab_1 | · Formulário de bomba com foto de cupom fiscal e hodômetro |  |  |  |  |  | todo |  |  |  |  |  |  |  |  |  |
| sub_tab_2 | · Reporte de emergência e sinistro com geolocalização GPS automática |  |  |  |  |  | todo |  |  |  |  |  |  |  |  |  |
| sub_tab_3 | · Bateria de testes de campo e homologação assistida nas 17 ATPs |  |  |  |  |  | todo |  |  |  |  |  |  |  |  |  |
| sprint_0 | Sprint 0: Imersão, Requisitos & Setup da Stack | sprint | 2026-09-21 | 10 | 2026-10-02 | 75 | in_progress | on_track | Alinhamento presencial em SP (21-25/09), definição da stack (PostgreSQL + FastAPI + React) e setup da fundação. |  |  |  |  |  | up_sp0_1 2026-09-23T13:20:00.000Z Reunião de Requisitos de 23/09 alinhou stack oficial (PostgreSQL + FastAPI + React) e as 4 prioridades do Gestor (Prazo, Controle, Combustível, Manutenção). Tech Lead / Scrum Master technical |  |
| sprint_1 | Sprint 1: Cautela do Técnico & Controle da Frota | sprint | 2026-10-05 | 10 | 2026-10-16 | 0 | not_started | on_track | Sprint Goal: Permitir ao Técnico consultar o carro cautelado no app (Scrum_diagram.png). |  |  |  | dep_sp1 sprint_0 FS |  |  |  |
| sprint_2 | Sprint 2: Torre de Controle, Prazos & Despacho | sprint | 2026-10-19 | 10 | 2026-10-30 | 0 | not_started | on_track | Sprint Goal: Disponibilizar a Torre de Controle com gestão de vigência de leasing Arval e alocação de veículos. |  |  |  | dep_sp2 sprint_1 FS |  |  |  |
| sprint_3 | Sprint 3: Controle de Manutenção & Alertas de Odômetro | sprint | 2026-11-02 | 10 | 2026-11-13 | 0 | not_started | on_track | Sprint Goal: Monitorar manutenções preventivas a cada 10k km e bloqueios na máquina de estados. |  |  |  | dep_sp3 sprint_2 FS |  |  |  |
| sprint_4 | Sprint 4: Combustível, Integração ValeCard REST & Anti-Fraude | sprint | 2026-11-16 | 10 | 2026-11-27 | 0 | not_started | on_track | Sprint Goal: Conectar o webservice REST oficial da ValeCard e auditar consumo Km/L com anti-fraude. |  |  |  | dep_sp4 sprint_3 FS |  |  |  |
| sprint_5 | Sprint 5: PWA do Técnico, Checklist 360° & Offline | sprint | 2026-11-30 | 10 | 2026-12-11 | 0 | not_started | on_track | Sprint Goal: Realizar vistoria digital completa com 5 fotos WebP mesmo sem conexão (IndexedDB). |  |  |  | dep_sp5 sprint_4 FS |  |  |  |
| sprint_6 | Sprint 6: Abastecimento de Campo, Sinistros & Homologação | sprint | 2026-12-14 | 10 | 2026-12-28 | 0 | not_started | on_track | Sprint Goal: Fechar a jornada de campo e homologar o sistema integrado nas 17 Bases Regionais (BOP-01 a BOP-17). |  |  |  | dep_sp6 sprint_5 FS |  |  |  |
| milestone_fase1_val | Marco 1: Homologação da Torre do Gestor (Fase 1) | milestone | 2026-11-27 | 0 | 2026-11-27 | 0 |  |  |  |  |  |  | dep_m1 sprint_4 FS |  |  | True |
| milestone_go_live | Marco 2: Go-Live Geral & Operação nas 17 ATPs | milestone | 2026-12-28 | 0 | 2026-12-28 | 0 |  |  |  |  |  |  | dep_m2 sprint_6 FS |  |  | True |
